# ProjetCC

Schedule from GanttProject, 2020-10-15 to 2021-01-15.

## Calendars

- Project calendar: Mon-Sun working.

## Resources

| Resource |
| --- |
| Pierre Cry |
| Nur Kinali |
| Benoît Pannetier |
| Jérémy Pascal |
| Guillaume Vivies |
| Burak Yalcin |

## Schedule

| ID | WBS | Task | Type | Duration | Start | Finish | Predecessors | Resources |
| --- | --- | --- | --- | --- | --- | --- | --- | --- |
| 1 | 1 | **Projet Bloc n°1** |  | 22d | 2020-10-15 | 2020-11-05 |  |  |
| 2 | 1.1 | **Gestion de Projet** |  | 18d | 2020-10-19 | 2020-11-05 |  | Benoît Pannetier |
| 3 | 1.1.1 | Coaching n°1 | milestone | 0d | 2020-10-21 | 2020-10-21 |  |  |
| 4 | 1.1.2 | Coaching n°2 | milestone | 0d | 2020-11-06 | 2020-11-06 | 5 |  |
| 5 | 1.1.3 | **Rédaction PDDQ** |  | 16d | 2020-10-21 | 2020-11-05 | 3 | Benoît Pannetier |
| 6 | 1.1.3.1 | Introduction et Définition |  | 4d | 2020-10-21 | 2020-10-24 |  | Benoît Pannetier |
| 7 | 1.1.3.2 | Arbre de Produit |  | 2d | 2020-10-22 | 2020-10-23 |  | Benoît Pannetier |
| 8 | 1.1.3.3 | Analyse des Risques |  | 4d | 2020-10-21 | 2020-10-24 |  | Pierre Cry |
| 9 | 1.1.3.4 | Relecture |  | 1d | 2020-10-25 | 2020-10-25 | 6, 7, 8 | Pierre Cry; Nur Kinali; Benoît Pannetier; Jérémy Pascal; Guillaume Vivies; Burak Yalcin |
| 10 | 1.1.3.5 | Backlog de Produit |  | 15d | 2020-10-21 | 2020-11-04 |  | Benoît Pannetier |
| 11 | 1.1.3.6 | WBS |  | 6d | 2020-10-21 | 2020-10-26 |  | Nur Kinali |
| 12 | 1.1.3.7 | Plan Qualité |  | 7d | 2020-10-29 | 2020-11-04 |  | Pierre Cry |
| 13 | 1.1.3.8 | Relecture |  | 1d | 2020-11-05 | 2020-11-05 | 9, 10, 11, 12 | Pierre Cry; Nur Kinali; Benoît Pannetier; Jérémy Pascal; Guillaume Vivies; Burak Yalcin |
| 14 | 1.1.4 | Gantt |  | 18d | 2020-10-19 | 2020-11-05 |  | Burak Yalcin |
| 15 | 1.2 | Lancement du projet | milestone | 0d | 2020-10-15 | 2020-10-15 |  |  |
| 16 | 1.3 | Préparation réunion n°1 |  | 4d | 2020-10-15 | 2020-10-18 | 15 | Pierre Cry; Nur Kinali; Benoît Pannetier; Jérémy Pascal; Guillaume Vivies; Burak Yalcin |
| 17 | 1.4 | Réunion Groupe n°1 | milestone | 0d | 2020-10-19 | 2020-10-19 | 16 |  |
| 18 | 1.5 | Réunion Client n°1 | milestone | 0d | 2020-10-19 | 2020-10-19 | 17 |  |
| 19 | 1.6 | Point Réunion n°1 |  | 1d | 2020-10-19 | 2020-10-19 | 18 | Pierre Cry; Nur Kinali; Benoît Pannetier; Jérémy Pascal; Guillaume Vivies; Burak Yalcin |
| 20 | 1.7 | **Bibliographie** |  | 13d | 2020-10-20 | 2020-11-01 | 19 | Nur Kinali |
| 21 | 1.7.1 | Rédaction |  | 5d | 2020-10-20 | 2020-10-24 |  | Nur Kinali; Jérémy Pascal; Burak Yalcin |
| 22 | 1.7.2 | Relecture |  | 1d | 2020-10-25 | 2020-10-25 | 21 | Nur Kinali; Burak Yalcin |
| 23 | 1.7.3 | Rédaction |  | 5d | 2020-10-27 | 2020-10-31 | 36 | Nur Kinali |
| 24 | 1.7.4 | Relecture |  | 1d | 2020-11-01 | 2020-11-01 | 23 | Nur Kinali; Burak Yalcin |

| ID | WBS | Task | Type | Duration | Start | Finish | Predecessors | Resources |
| --- | --- | --- | --- | --- | --- | --- | --- | --- |
| 25 | 1.8 | **Préparation Réunion n°2** |  | 6d | 2020-10-20 | 2020-10-25 | 19 | Pierre Cry; Nur Kinali; Benoît Pannetier; Jérémy Pascal; Guillaume Vivies; Burak Yalcin |
| 26 | 1.8.1 | **Prototypage de l'interface** |  | 3d | 2020-10-20 | 2020-10-22 |  | Pierre Cry; Guillaume Vivies |
| 27 | 1.8.1.1 | Canvas |  | 3d | 2020-10-20 | 2020-10-22 |  | Guillaume Vivies |
| 28 | 1.8.1.2 | Brainstorming Page Web |  | 3d | 2020-10-20 | 2020-10-22 |  | Pierre Cry |
| 29 | 1.8.2 | Analyse Règles de Correction |  | 3d | 2020-10-20 | 2020-10-22 |  | Burak Yalcin |
| 30 | 1.8.3 | Réunion Groupe n°2 | milestone | 0d | 2020-10-23 | 2020-10-23 | 26, 29 |  |
| 31 | 1.8.4 | **Développement Interface** |  | 3d | 2020-10-23 | 2020-10-25 | 30 | Jérémy Pascal; Guillaume Vivies |
| 32 | 1.8.4.1 | Canvas |  | 3d | 2020-10-23 | 2020-10-25 |  | Pierre Cry; Guillaume Vivies |
| 33 | 1.8.4.2 | CSS/HTML |  | 3d | 2020-10-23 | 2020-10-25 |  | Pierre Cry; Jérémy Pascal |
| 34 | 1.8.5 | Prototypage Algorithme |  | 3d | 2020-10-23 | 2020-10-25 | 30 | Burak Yalcin |
| 35 | 1.9 | Réunion Client n°2 | milestone | 0d | 2020-10-26 | 2020-10-26 | 22, 25 |  |
| 36 | 1.10 | Point Réunion n°2 |  | 1d | 2020-10-26 | 2020-10-26 | 35 | Pierre Cry; Nur Kinali; Benoît Pannetier; Jérémy Pascal; Guillaume Vivies; Burak Yalcin |
| 37 | 1.11 | **Préparation Réunion n°3** |  | 6d | 2020-10-27 | 2020-11-01 | 36 | Pierre Cry; Nur Kinali; Benoît Pannetier; Jérémy Pascal; Guillaume Vivies; Burak Yalcin |
| 38 | 1.11.1 | **Développement Interface** |  | 1d | 2020-10-27 | 2020-10-27 |  | Pierre Cry; Jérémy Pascal; Guillaume Vivies |
| 39 | 1.11.1.1 | Canvas |  | 1d | 2020-10-27 | 2020-10-27 |  | Guillaume Vivies |
| 40 | 1.11.1.2 | HTML/CSS |  | 1d | 2020-10-27 | 2020-10-27 |  | Jérémy Pascal |
| 41 | 1.11.2 | **Développement Algorithme** |  | 1d | 2020-10-27 | 2020-10-27 |  | Burak Yalcin |
| 42 | 1.11.2.1 | Création Diagramme de Classes |  | 1d | 2020-10-27 | 2020-10-27 |  | Burak Yalcin |
| 43 | 1.11.3 | Réunion Groupe n°3 | milestone | 0d | 2020-10-28 | 2020-10-28 | 38, 41 |  |
| 44 | 1.11.4 | **Développement Interface** |  | 5d | 2020-10-28 | 2020-11-01 | 43 | Pierre Cry; Jérémy Pascal; Guillaume Vivies |
| 45 | 1.11.4.1 | Canvas |  | 5d | 2020-10-28 | 2020-11-01 |  | Guillaume Vivies |
| 46 | 1.11.4.2 | HTML/CSS |  | 5d | 2020-10-28 | 2020-11-01 |  | Jérémy Pascal |
| 47 | 1.11.5 | **Développement Algorithme** |  | 5d | 2020-10-28 | 2020-11-01 | 43 | Burak Yalcin |
| 48 | 1.11.5.1 | Création Diagramme de Classes |  | 1d | 2020-10-28 | 2020-10-28 |  | Burak Yalcin |
| 49 | 1.11.5.2 | Rédaction Algorithme |  | 4d | 2020-10-29 | 2020-11-01 | 48 | Burak Yalcin |
| 50 | 1.12 | Réunion Client n°3 | milestone | 0d | 2020-11-02 | 2020-11-02 | 24, 37 |  |
| 51 | 1.13 | Point Réunion n°3 |  | 1d | 2020-11-02 | 2020-11-02 | 50 | Pierre Cry; Nur Kinali; Benoît Pannetier; Guillaume Vivies; Burak Yalcin |

| ID | WBS | Task | Type | Duration | Start | Finish | Predecessors | Resources |
| --- | --- | --- | --- | --- | --- | --- | --- | --- |
| 52 | 1.14 | **Préparation Réunion n°3** |  | 3d | 2020-11-03 | 2020-11-05 | 51 | Pierre Cry; Nur Kinali; Benoît Pannetier; Jérémy Pascal; Guillaume Vivies; Burak Yalcin |
| 53 | 1.14.1 | **Développement Interface** |  | 1d | 2020-11-03 | 2020-11-03 |  | Pierre Cry; Jérémy Pascal; Guillaume Vivies |
| 54 | 1.14.1.1 | HTML/CSS |  | 1d | 2020-11-03 | 2020-11-03 |  | Jérémy Pascal |
| 55 | 1.14.2 | **Développement Algorithme** |  | 1d | 2020-11-03 | 2020-11-03 |  | Burak Yalcin |
| 56 | 1.14.2.1 | Mise à Jour Algorithme |  | 1d | 2020-11-03 | 2020-11-03 |  | Burak Yalcin |
| 57 | 1.14.3 | Réunion Groupe n°4 | milestone | 0d | 2020-11-04 | 2020-11-04 | 53, 55 |  |
| 58 | 1.14.4 | **Développement Interface** |  | 2d | 2020-11-04 | 2020-11-05 | 57 | Pierre Cry; Jérémy Pascal; Guillaume Vivies |
| 59 | 1.14.4.1 | HTML/CSS |  | 2d | 2020-11-04 | 2020-11-05 |  | Jérémy Pascal |
| 60 | 1.14.5 | **Développement Algorithme** |  | 2d | 2020-11-04 | 2020-11-05 | 57 | Burak Yalcin |
| 61 | 1.14.5.1 | Mise à Jour Algorithme |  | 2d | 2020-11-04 | 2020-11-05 |  | Burak Yalcin |
| 62 | 1.15 | Réunion client n°4 | milestone | 0d | 2020-11-06 | 2020-11-06 | 52 |  |
| 63 | 2 | **Projet Bloc n°2** |  | 39d | 2020-12-07 | 2021-01-14 |  |  |
| 64 | 2.1 | **Gestion de Projet** |  | 39d | 2020-12-07 | 2021-01-14 |  | Benoît Pannetier |
| 65 | 2.1.1 | Coaching n°3 | milestone | 0d | 2020-12-15 | 2020-12-15 |  |  |
| 66 | 2.1.2 | Coaching n°4 | milestone | 0d | 2021-01-15 | 2021-01-15 | 80 |  |
| 67 | 2.1.3 | **Rédaction PDDQ** |  | 12d | 2020-12-07 | 2020-12-18 | 82 |  |
| 68 | 2.1.3.1 | MAJ Analyse des Risques |  | 1d | 2020-12-07 | 2020-12-07 |  |  |
| 69 | 2.1.3.2 | Relecture |  | 1d | 2020-12-08 | 2020-12-08 | 68 |  |
| 70 | 2.1.3.3 | MAJ Backlog de Produit |  | 10d | 2020-12-07 | 2020-12-16 |  |  |
| 71 | 2.1.3.4 | MAJ WBS |  | 4d | 2020-12-07 | 2020-12-10 |  |  |
| 72 | 2.1.3.5 | MAJ Plan Qualité |  | 2d | 2020-12-07 | 2020-12-08 |  |  |
| 73 | 2.1.3.6 | Relecture |  | 1d | 2020-12-17 | 2020-12-17 | 70, 71, 72 |  |
| 74 | 2.1.3.7 | Gantt |  | 5d | 2020-12-14 | 2020-12-18 |  |  |
| 75 | 2.1.4 | **Rédaction PDDQ** |  | 10d | 2021-01-05 | 2021-01-14 |  |  |
| 76 | 2.1.4.1 | MAJ Analyse des Risques |  | 1d | 2021-01-05 | 2021-01-05 | 81, 83 |  |
| 77 | 2.1.4.2 | MAJ PDDQ |  | 5d | 2021-01-06 | 2021-01-10 | 76 |  |
| 78 | 2.1.4.3 | MAJ Analyse des Risques |  | 1d | 2021-01-11 | 2021-01-11 | 77, 84 |  |
| 79 | 2.1.4.4 | Gantt |  | 5d | 2021-01-06 | 2021-01-10 | 76 |  |
| 80 | 2.1.4.5 | Préparation Présentation |  | 3d | 2021-01-12 | 2021-01-14 | 78, 79 |  |
| 81 | 3 | Révisions |  | 17d | 2020-12-19 | 2021-01-04 | 67, 74, 87 |  |
| 82 | 4 | Réunion client n°5 | milestone | 0d | 2020-12-07 | 2020-12-07 |  |  |
| 83 | 5 | Réunion client n°6 | milestone | 0d | 2021-01-05 | 2021-01-05 |  |  |
| 84 | 6 | Réunion client n°7 | milestone | 0d | 2021-01-11 | 2021-01-11 | 93 |  |
| 85 | 7 | Réunion client n°8 | milestone | 0d | 2021-01-15 | 2021-01-15 |  |  |
| 86 | 8 | Point réunion n°5 |  | 1d | 2020-12-07 | 2020-12-07 | 82 |  |

| ID | WBS | Task | Duration | Start | Finish | Predecessors |
| --- | --- | --- | --- | --- | --- | --- |
| 87 | 9 | **Préparation Réunion n°6** | 11d | 2020-12-08 | 2020-12-18 | 86 |
| 88 | 9.1 | Recherche Base de Données | 11d | 2020-12-08 | 2020-12-18 |  |
| 89 | 9.2 | Développement Interface | 11d | 2020-12-08 | 2020-12-18 |  |
| 90 | 9.3 | Développement Outil | 11d | 2020-12-08 | 2020-12-18 |  |
| 91 | 9.4 | Développement Algorithme | 11d | 2020-12-08 | 2020-12-18 |  |
| 92 | 10 | Point Réunion n°6 | 1d | 2021-01-05 | 2021-01-05 | 83 |
| 93 | 11 | **Préparation Réunion n°7** | 5d | 2021-01-06 | 2021-01-10 | 92 |
| 94 | 11.1 | Recherche Base de Données | 5d | 2021-01-06 | 2021-01-10 |  |
| 95 | 11.2 | Développement Interface | 5d | 2021-01-06 | 2021-01-10 |  |
| 96 | 11.3 | Développement Outil | 5d | 2021-01-06 | 2021-01-10 |  |
| 97 | 11.4 | Développement Algorithme | 5d | 2021-01-06 | 2021-01-10 |  |
